# Plan de trabajo JuarezNow

How a schedule from ProjectLibre changed from version to version. A marks actual dates.

## Version 1 (saved 2026-09-29)

Note of the change: Plan de Trabajo

| ID | WBS | Task | Duration | Start | Finish | Predecessors | Constraint |
| --- | --- | --- | --- | --- | --- | --- | --- |
| 1 | 0 | **JuarezNow** | 88d | 2026-08-11 | 2026-11-06 |  |  |
| 2 | 1 | **FASE 1 — Planeación e investigación inicial (CONCLUIDA)** | 9d | 2026-08-11 | 2026-08-19 |  |  |
| 3 | 1.1 | **1.1 Arranque** | 9d | 2026-08-11 | 2026-08-19 |  |  |
| 4 |  | Definición de objetivos, misión, visión y alcance | 3d | 2026-08-11 | 2026-08-13 |  |  |
| 5 |  | Diseño del instrumento de encuesta | 6d | 2026-08-14 | 2026-08-19 | 4 |  |
| 6 |  | Creación de entornos de trabajo (GitHub, Jira, Drive) | 1d | 2026-08-11 | 2026-08-11 |  |  |
| 7 | 2 | **FASE 2 — Análisis y diseño · 9 – 28 de septiembre de 2026** | 21d | 2026-09-09 | 2026-09-29 |  |  |
| 8 | 2.1 | **2.0 Inicio de fase** | 0d | 2026-09-09 | 2026-09-09 |  |  |
| 9 |  | HITO: Inicio de Fase 2 | 0d | 2026-09-09 | 2026-09-09 | 5, 6 | start no earlier than 2026-09-09 |
| 10 | 2.2 | **2.1 Investigación y análisis** | 19d | 2026-09-09 | 2026-09-27 |  |  |
| 11 |  | Aplicación de la encuesta (~150 personas) | 10d | 2026-09-09 | 2026-09-18 | 9 |  |
| 12 |  | Análisis de recursos y costos | 3d | 2026-09-14 | 2026-09-16 | 9, 19 |  |
| 13 |  | Resultados de encuesta | 3d | 2026-09-19 | 2026-09-21 | 11, 25 |  |
| 14 |  | Análisis FODA | 3d | 2026-09-22 | 2026-09-24 | 13 |  |
| 15 |  | Plan de trabajo | 3d | 2026-09-25 | 2026-09-27 | 12, 14, 44 |  |
| 16 | 2.3 | **2.2 Configuración de entornos** | 7d | 2026-09-09 | 2026-09-15 |  |  |
| 17 |  | Agregar archivos al repositorio (main, develop, .gitignore, README) | 3d | 2026-09-09 | 2026-09-11 | 9 |  |
| 18 |  | Configurar proyecto Figma | 2d | 2026-09-12 | 2026-09-13 | 9, 29 |  |
| 19 |  | Configurar proyecto Jira | 2d | 2026-09-12 | 2026-09-13 | 9, 38 |  |
| 20 |  | Configurar proyecto Django | 2d | 2026-09-12 | 2026-09-13 | 17 |  |
| 21 |  | Configurar proyecto React | 2d | 2026-09-13 | 2026-09-14 | 17, 37 |  |
| 22 |  | Configurar PostgreSQL + variables de entorno (.env) | 2d | 2026-09-14 | 2026-09-15 | 20 |  |
| 23 | 2.4 | **2.3 Modelado y arquitectura** | 13d | 2026-09-09 | 2026-09-21 |  |  |
| 24 |  | Diagrama de casos de uso | 4d | 2026-09-09 | 2026-09-12 | 9 |  |
| 25 |  | Diagramas de secuencia (flujos principales) | 3d | 2026-09-14 | 2026-09-16 | 24, 39 |  |
| 26 |  | Modelo entidad-relación / base de datos | 3d | 2026-09-16 | 2026-09-18 | 22, 24 |  |
| 27 |  | Definición de arquitectura técnica (stack, patrones, estructura) | 3d | 2026-09-19 | 2026-09-21 | 20, 21, 22, 26 |  |
| 28 | 2.5 | **2.4 Diseño UX/UI** | 9d | 2026-09-09 | 2026-09-17 |  |  |
| 29 |  | Identidad de la empresa | 3d | 2026-09-09 | 2026-09-11 | 9 |  |
| 30 |  | Definir fuentes y paletas de colores | 2d | 2026-09-12 | 2026-09-13 | 18, 29 |  |
| 31 |  | Wireframes | 3d | 2026-09-14 | 2026-09-16 | 18, 24, 29, 30 |  |
| 32 |  | Crear template base (navbar, footer, bloque content, mensajes, CSS/Bootstrap) | 3d | 2026-09-15 | 2026-09-17 | 21, 30, 40 |  |
| 33 |  | Prototipo visual | 3d | 2026-09-14 | 2026-09-16 | 30, 31 |  |
| 34 | 2.6 | **2.5 Documentación SRS (cap. 1 y 2)** | 18d | 2026-09-09 | 2026-09-26 |  |  |
| 35 |  | 1.1 Propósito | 1d | 2026-09-09 | 2026-09-09 | 9 |  |
| 36 |  | 1.2 Alcance | 1d | 2026-09-10 | 2026-09-10 | 35 |  |
| 37 |  | 1.3 Definiciones, acrónimos y abreviaturas | 2d | 2026-09-11 | 2026-09-12 | 36 |  |
| 38 |  | 1.5 Visión general | 1d | 2026-09-11 | 2026-09-11 | 36 |  |
| 39 |  | 2.2 Funciones del producto | 2d | 2026-09-12 | 2026-09-13 | 38 |  |
| 40 |  | 2.1 Perspectiva del producto | 2d | 2026-09-12 | 2026-09-13 | 38 |  |
| 41 |  | 2.5 Suposiciones y dependencias | 2d | 2026-09-14 | 2026-09-15 | 12, 39, 40 |  |
| 42 |  | 2.6 Distribución de requerimientos | 2d | 2026-09-16 | 2026-09-17 | 39, 40, 41 |  |
| 43 |  | 2.3 Características de los usuarios | 3d | 2026-09-22 | 2026-09-24 | 13, 33, 38 |  |
| 44 |  | 2.4 Restricciones | 2d | 2026-09-22 | 2026-09-23 | 27, 38 |  |
| 45 |  | 2.2.1 Diagrama de casos de uso | 2d | 2026-09-25 | 2026-09-26 | 14, 24, 39 |  |
| 46 |  | 1.4 Referencias | 1d | 2026-09-25 | 2026-09-25 | 36, 43 |  |
| 47 | 2.7 | **2.6 Cierre de fase** | 2d | 2026-09-28 | 2026-09-29 |  |  |
| 48 |  | Revisión y consolidación de entregables de Fase 2 | 2d | 2026-09-28 | 2026-09-29 | 15, 25, 27, 31, 32, 33, 37, 39, 41, 42, 43, 44, 45, 46 |  |
| 49 |  | HITO: Cierre Fase 2 — Análisis, diseño y prototipo aprobados | 0d | 2026-09-29 | 2026-09-29 | 12, 13, 14, 15, 17, 18, 19, 20, 21, 22, 24, 25, 26, 27, 29, 30, 31, 32, 33, 35, 36, 37, 38, 39, 40, 41, 42, 43, 44, 45, 46, 48 |  |
| 50 | 3 | **FASE 3 — Desarrollo, pruebas y despliegue · 29 de septiembre – 8 de noviembre de 2026** | 34d | 2026-09-30 | 2026-11-02 |  |  |
| 51 | 3.1 | **3.1 Documentación SRS (cap. 3 y 4)** | 20d | 2026-09-30 | 2026-10-19 |  |  |
| 52 |  | 3.1 Interfaces externas (Figma) | 2d | 2026-09-30 | 2026-10-01 | 33, 46, 49 |  |
| 53 |  | 3.2 Historias de Usuario | 4d | 2026-09-30 | 2026-10-03 | 24, 42, 45, 49 |  |
| 54 |  | 3.4 Requerimientos no funcionales | 3d | 2026-09-30 | 2026-10-02 | 27, 38, 48, 49 |  |
| 55 |  | 3.9 Arquitectura | 3d | 2026-09-30 | 2026-10-02 | 27, 49 |  |
| 56 |  | 3.8 Restricciones de diseño | 3d | 2026-10-02 | 2026-10-04 | 52 |  |
| 57 |  | 3.3 Requerimientos funcionales | 4d | 2026-10-04 | 2026-10-07 | 38, 53 |  |
| 58 |  | 3.10 Atributos del sistema de software | 3d | 2026-10-05 | 2026-10-07 | 55, 56 |  |
| 59 |  | 3.5 Reglas de negocio | 3d | 2026-10-08 | 2026-10-10 | 53, 57 |  |
| 60 |  | 3.7 Diagrama de procesos | 3d | 2026-10-08 | 2026-10-10 | 25, 57, 58 |  |
| 61 |  | 3.6 Diagramas de base de datos | 3d | 2026-10-07 | 2026-10-09 | 26, 49, 77 |  |
| 62 |  | 3.11 Organización de los requerimientos específicos | 2d | 2026-10-11 | 2026-10-12 | 52, 53, 54, 56, 57, 58, 59, 60, 61 |  |
| 63 |  | 4.1 Tabla de contenido e índice | 2d | 2026-10-13 | 2026-10-14 | 62 |  |
| 64 |  | 4.3 Matriz de riesgos | 2d | 2026-10-15 | 2026-10-16 | 62, 63 |  |
| 65 |  | 4.2 Apéndices | 3d | 2026-10-17 | 2026-10-19 | 63, 64 |  |
| 66 | 3.2 | **3.2 Módulo Inicio** | 21d | 2026-09-30 | 2026-10-20 |  |  |
| 67 |  | Componente de navegación (Navbar y Footer) | 3d | 2026-09-30 | 2026-10-02 | 32, 49 |  |
| 68 |  | Mostrar página de inicio con resumen de reportes del día | 3d | 2026-10-05 | 2026-10-07 | 27, 33, 67, 76 |  |
| 69 |  | Consultar listado completo de reportes con paginación | 2d | 2026-10-11 | 2026-10-12 | 82 |  |
| 70 |  | Mostrar feed de reportes recientes | 3d | 2026-10-18 | 2026-10-20 | 68, 82, 85 |  |

| ID | WBS | Task | Duration | Start | Finish | Predecessors | Constraint |
| --- | --- | --- | --- | --- | --- | --- | --- |
| 71 | 3.3 | **3.3 Módulo iniciar sesión** | 5d | 2026-10-03 | 2026-10-07 |  |  |
| 72 |  | Inicio de sesión | 3d | 2026-10-03 | 2026-10-05 | 22, 55, 67 |  |
| 73 |  | Cerrar sesión | 2d | 2026-10-06 | 2026-10-07 | 72 |  |
| 74 | 3.4 | **3.4 Módulo registrar cuenta** | 4d | 2026-10-03 | 2026-10-06 |  |  |
| 75 |  | Registro de usuario | 3d | 2026-10-03 | 2026-10-05 | 22, 67 |  |
| 76 |  | Validar datos del formulario de registro | 2d | 2026-10-03 | 2026-10-04 |  | start no earlier than 2026-10-03 |
| 77 |  | Confirmar cuenta creada | 2d | 2026-10-05 | 2026-10-06 | 76 |  |
| 78 | 3.5 | **3.5 Módulo crear reporte** | 6d | 2026-10-08 | 2026-10-13 |  |  |
| 79 |  | Crear reporte de incidente (categoría, ubicación y descripción) | 3d | 2026-10-08 | 2026-10-10 | 26, 68, 72, 77 |  |
| 80 |  | Capturar ubicación del incidente | 3d | 2026-10-11 | 2026-10-13 | 79 |  |
| 81 |  | Adjuntar evidencia fotográfica al reporte | 3d | 2026-10-11 | 2026-10-13 | 61, 79 |  |
| 82 |  | Enviar y guardar el reporte en el sistema | 3d | 2026-10-08 | 2026-10-10 | 22 | start no earlier than 2026-10-08 |
| 83 | 3.6 | **3.6 Módulo reportes** | 7d | 2026-10-14 | 2026-10-20 |  |  |
| 84 |  | Visualizar mis reportes creados | 3d | 2026-10-14 | 2026-10-16 | 80, 82 |  |
| 85 |  | Editar mi reporte | 3d | 2026-10-15 | 2026-10-17 |  | start no earlier than 2026-10-15 |
| 86 |  | Eliminar mi reporte | 2d | 2026-10-17 | 2026-10-18 | 69, 84 |  |
| 87 |  | Validar que solo el autor pueda editar o eliminar su reporte | 2d | 2026-10-19 | 2026-10-20 | 85, 86 |  |
| 88 | 3.7 | **3.7 Módulo mapa** | 11d | 2026-10-11 | 2026-10-21 |  |  |
| 89 |  | Visualizar mapa interactivo de incidentes geolocalizados | 5d | 2026-10-11 | 2026-10-15 | 60, 82 |  |
| 90 |  | Mostrar pines de incidentes | 3d | 2026-10-16 | 2026-10-18 | 89 |  |
| 91 |  | Filtrar incidentes por tipo en el mapa | 2d | 2026-10-19 | 2026-10-20 | 90 |  |
| 92 |  | Mostrar leyenda de categorías | 1d | 2026-10-21 | 2026-10-21 | 90, 91 |  |
| 93 | 3.8 | **3.8 Pruebas** | 9d | 2026-10-22 | 2026-10-30 |  |  |
| 94 |  | Pruebas funcionales por módulo | 4d | 2026-10-22 | 2026-10-25 | 59, 69, 70, 73, 77, 87, 91, 92 |  |
| 95 |  | Corrección de errores detectados | 3d | 2026-10-26 | 2026-10-28 | 87, 94 |  |
| 96 |  | Pruebas de regresión y validación final | 2d | 2026-10-29 | 2026-10-30 | 94, 95 |  |
| 97 | 3.9 | **3.9 Despliegue y cierre** | 14d | 2026-10-20 | 2026-11-02 |  |  |
| 98 |  | Revisión integral y ajustes finales de la documentación | 3d | 2026-10-20 | 2026-10-22 | 65 |  |
| 99 |  | Desplegar el sistema | 2d | 2026-10-29 | 2026-10-30 | 95 |  |
| 100 |  | Preparación de la presentación y demo final | 3d | 2026-10-31 | 2026-11-02 | 92, 99 |  |
| 101 | 4 | **CIERRE — Reserva de contingencia y entrega · 9 – 13 de noviembre de 2026** | 4d | 2026-11-03 | 2026-11-06 |  |  |
| 102 | 4.1 | **4.1 Reserva y entrega** | 4d | 2026-11-03 | 2026-11-06 |  |  |
| 103 |  | Reserva de contingencia y atención de retroalimentación (buffer) | 4d | 2026-11-03 | 2026-11-06 | 96, 98, 99, 100 |  |
| 104 |  | HITO: Entrega final del proyecto | 0d | 2026-11-06 | 2026-11-06 | 103 |  |

## Version 2 (saved 2026-11-20)

Note of the change: Plan de trabajo ProjectLibre

Last finish 2026-11-06 → 2026-11-13 (+7d).

Changed:

| ID | Task | Start | Finish | Duration |
| --- | --- | --- | --- | --- |
| 1 | **JuarezNow** |  | 2026-11-06 → 2026-11-13 (+7d) | 88d → 95d |
| 50 | **FASE 3 — Desarrollo, pruebas y despliegue · 29 de septiembre – 8 de noviembre de 2026** |  | 2026-11-02 → 2026-11-09 (+7d) | 34d → 41d |
| 88 | **3.7 Módulo mapa** |  | 2026-10-21 → 2026-10-22 (+1d) | 11d → 12d |
| 92 | Mostrar leyenda de categorías |  | 2026-10-21 → 2026-10-22 (+1d) | 1d → 2d |
| 93 | **3.8 Pruebas** | 2026-10-22 → 2026-10-23 (+1d) | 2026-10-30 → 2026-11-05 (+6d) | 9d → 14d |
| 94 | Pruebas funcionales por módulo | 2026-10-22 → 2026-10-23 (+1d) | 2026-10-25 → 2026-10-27 (+2d) | 4d → 5d |
| 95 | Corrección de errores detectados | 2026-10-26 → 2026-10-28 (+2d) | 2026-10-28 → 2026-11-01 (+4d) | 3d → 5d |
| 96 | Pruebas de regresión y validación final | 2026-10-29 → 2026-11-02 (+4d) | 2026-10-30 → 2026-11-05 (+6d) | 2d → 4d |
| 97 | **3.9 Despliegue y cierre** |  | 2026-11-02 → 2026-11-09 (+7d) | 14d → 21d |
| 98 | Revisión integral y ajustes finales de la documentación |  | 2026-10-22 → 2026-10-24 (+2d) | 3d → 5d |
| 99 | Desplegar el sistema | 2026-10-29 → 2026-11-02 (+4d) | 2026-10-30 → 2026-11-06 (+7d) | 2d → 5d |
| 100 | Preparación de la presentación y demo final | 2026-10-31 → 2026-11-07 (+7d) | 2026-11-02 → 2026-11-09 (+7d) |  |
| 101 | **CIERRE — Reserva de contingencia y entrega · 9 – 13 de noviembre de 2026** | 2026-11-03 → 2026-11-10 (+7d) | 2026-11-06 → 2026-11-13 (+7d) |  |
| 102 | **4.1 Reserva y entrega** | 2026-11-03 → 2026-11-10 (+7d) | 2026-11-06 → 2026-11-13 (+7d) |  |
| 103 | Reserva de contingencia y atención de retroalimentación (buffer) | 2026-11-03 → 2026-11-10 (+7d) | 2026-11-06 → 2026-11-13 (+7d) |  |
| 104 | HITO: Entrega final del proyecto | 2026-11-06 → 2026-11-13 (+7d) | 2026-11-06 → 2026-11-13 (+7d) |  |
